# Modèle QCM

How a schedule from MS Project changed from version to version. A marks actual dates.

## Version 1 (saved 2015-12-01)

Note of the change: Cahier des charges + spécifications générales

| ID | WBS | Task | Duration | Start | Finish | Predecessors | Complete | Total float | Constraint |
| --- | --- | --- | --- | --- | --- | --- | --- | --- | --- |
| 1 | 1 | **1. Rédaction** | 53d | 2015-10-06 A | 2015-12-02 |  | 8% | 176d |  |
| 2 |  | Début de projet | 0d | 2015-10-06 A | 2015-10-06 A |  | 100% |  | start no earlier than 2015-10-06 |
| 3 |  | 1.1 Rédaction du cahier des charges | 4d | 2015-10-06 A | 2015-10-09 A |  | 100% |  |  |
| 4 |  | 1.2 Rédaction des spécifications générales | 9d | 2015-10-10 | 2015-10-23 | 3 |  | 0d |  |
| 5 |  | Validation Cahier des charges fonctionnel | 0d | 2015-10-24 | 2015-10-24 | 4 |  | 216d | start no earlier than 2015-10-24 |
| 6 |  | 1.3 Rédaction des spécifications détaillées | 40d | 2015-10-24 | 2015-12-02 | 4 |  | 0d |  |
| 7 |  | Validation Cahier des charges spécifique | 0d | 2015-12-02 | 2015-12-02 | 6 |  | 176d | start no earlier than 2015-12-02 |
| 8 | 2 | **2. Développement** | 147d | 2015-12-02 | 2016-06-04 |  |  | 0d |  |
| 9 |  | 2.1 Base de données | 2d | 2015-12-02 | 2015-12-04 | 6 |  | 0d |  |
| 10 |  | 2.2 Web Service | 30d | 2015-12-04 | 2016-01-15 | 9 |  | 0d |  |
| 11 |  | Validation Webservice et base de données | 0d | 2016-01-15 | 2016-01-15 | 10 |  | 144d | start no earlier than 2016-01-15 |
| 12 |  | 2.3 BackEnd Sonata | 7d | 2016-01-15 | 2016-01-22 | 10 |  | 0d |  |
| 13 |  | Validation BackEnd | 0d | 2016-01-22 | 2016-01-22 | 12 |  | 137d | start no earlier than 2016-01-22 |
| 14 |  | 2.4 Application Android | 36d | 2016-01-22 | 2016-03-11 | 12 |  | 0d |  |
| 15 |  | Validation application Android | 0d | 2016-03-11 | 2016-03-11 | 14 |  | 101d | start no earlier than 2016-03-11 |
| 16 |  | 2.5 Application IOS | 36d | 2016-03-11 | 2016-04-24 | 14 |  | 0d |  |
| 17 |  | Validation application IOS | 0d | 2016-04-24 | 2016-04-24 | 16 |  | 65d | start no earlier than 2016-04-24 |
| 18 |  | 2.6 Application Windows | 36d | 2016-04-24 | 2016-06-04 | 16 |  | 0d |  |
| 19 |  | Validation application Windows | 0d | 2016-06-04 | 2016-06-04 | 18 |  | 29d | start no earlier than 2016-06-04 |
| 20 | 3 | **3. Validation et déploiement** | 29d | 2016-06-04 | 2016-07-06 |  |  | 0d |  |
| 21 |  | 3.1 Environnement de test | 6d | 2016-06-04 | 2016-06-12 | 18 |  | 0d |  |
| 22 |  | 3.2 Test des applications mobiles | 10d | 2016-06-13 | 2016-06-27 | 21 |  | 0d |  |
| 23 |  | 3.3 Test BackEnd | 10d | 2016-06-28 | 2016-07-02 | 22 |  | 0d |  |
| 24 |  | 3.4 Validation des test | 0d | 2016-07-03 | 2016-07-03 | 23 |  | 3d | start no earlier than 2016-07-03 |
| 25 |  | 3.5 Environnement de production et déploiement | 3d | 2016-07-03 | 2016-07-05 | 23 |  | 0d |  |
| 26 |  | Fin de projet | 0d | 2016-07-06 | 2016-07-06 | 25 |  | 0d | start no earlier than 2016-07-06 |

## Version 2 (saved 2016-05-18)

Note of the change: Update documentation projet CDSM.

Last finish stays 2016-07-06. Complete tasks 2 → 6.

Changed:

| ID | Task | Start | Finish | Complete | Total float |
| --- | --- | --- | --- | --- | --- |
| 1 | **1. Rédaction** |  |  | 8% → 99% |  |
| 4 | 1.2 Rédaction des spécifications générales | 2015-10-10 A | 2015-10-23 A | 0% → 100% | 0d → none |
| 6 | 1.3 Rédaction des spécifications détaillées | 2015-10-24 A | 2015-12-02 A | 0% → 100% | 0d → none |
| 8 | **2. Développement** | 2015-12-02 A |  | 0% → 59% | 0d → 29d |
| 9 | 2.1 Base de données | 2015-12-02 A | 2015-12-04 A | 0% → 100% | 0d → none |
| 10 | 2.2 Web Service | 2015-12-04 A |  | 0% → 80% | 0d → 144d |
| 12 | 2.3 BackEnd Sonata | 2016-01-15 A | 2016-01-22 A | 0% → 100% | 0d → none |
| 14 | 2.4 Application Android | 2016-01-22 A |  | 0% → 50% | 0d → 7.2d |
| 16 | 2.5 Application IOS | 2016-03-11 A |  | 0% → 20% | 0d → 28.8d |
| 18 | 2.6 Application Windows | 2016-04-24 A |  | 0% → 80% |  |
